# 서버작업일정-2012-02-23

Schedule from MS Project, 2012-02-02 to 2012-07-18, A marks actual dates.

## Calendars

- 표준: Mon-Fri 08:00-12:00, 13:00-17:00; Sat-Sun off.

## Resources

| Resource |
| --- |
| ( 서버 조욱래) |
| 조욱래 |
| 이 용운 |
| 이용운 |
| 이용운조욱래 |
| 이용운 조욱래 |
| 이용운;조욱래 |
| 기획팀 |
| 박진모 |
| 백 훈 |
| 백훈 |
| 30 |
| 박진보 |

## Schedule

| ID | WBS | Task | Duration | Start | Finish | Predecessors | Complete | Remaining | Total slack | Free slack | Constraint | Resources | Work | Actual work |
| --- | --- | --- | --- | --- | --- | --- | --- | --- | --- | --- | --- | --- | --- | --- |
| 1 | 1 | **데이터 설계 ( 기획팀으로 작업 이관)** | 7d | 2012-02-02 A | 2012-02-10 |  | 80% | 1.4d | 113d |  |  |  | 272h | 217.6h |
| 2 | 1.1 | 설계문서 폼 규정. | 2d | 2012-02-02 A | 2012-02-03 |  | 80% | 0.4d | 5d | 0d |  | 이용운; 조욱래 | 32h | 25.6h |
| 3 | 1.2 | DB테이블 설계(Read/Write데이타) 문서 작성. | 5d | 2012-02-06 A | 2012-02-10 | 2 | 80% | 1d | 35d |  |  | 기획팀 | 40h | 32h |
| 4 | 1.3 | **시스템테이블(NMB파일, txt , Read Only데이타) -> 확인필요.** | 5d | 2012-02-06 A | 2012-02-10 | 2 | 80% | 1d | 113d |  |  | 기획팀 | 200h | 160h |
| 5 | 1.3.1 | **선수 테이블** | 5d | 2012-02-06 A | 2012-02-10 | 2 | 80% | 1d | 113d |  |  | 기획팀 | 160h | 128h |
| 6 | 1.3.1.1 | 타자 | 5d | 2012-02-06 A | 2012-02-10 | 2 | 80% | 1d | 35d |  |  | 기획팀 | 40h | 32h |
| 7 | 1.3.1.2 | 투수 | 5d | 2012-02-06 A | 2012-02-10 | 2 | 80% | 1d | 35d |  |  | 기획팀 | 40h | 32h |
| 8 | 1.3.1.3 | 그외 테이블 | 5d | 2012-02-06 A | 2012-02-10 |  | 80% | 1d | 35d |  |  | 기획팀 | 40h | 32h |
| 11 | 2 | **네트웍 모듈 준비** | 33.94d | 2012-02-06 A | 2012-03-22 | 2 | 46% | 18.18d | 84.06d |  |  |  | 799.52h | 479.52h |
| 12 | 2.1 | **클라 네트웍모듈 작성** | 10d | 2012-02-06 | 2012-02-17 |  |  |  | 108d |  |  | 이용운 | 320h |  |
| 13 | 2.1.1 | 안드로이드 | 10d | 2012-02-06 | 2012-02-17 |  |  |  | 23d |  |  | 이용운 | 80h |  |
| 14 | 2.1.2 | 아이폰 (컨넥팅 완료, Object-C ) | 10d | 2012-02-06 | 2012-02-17 |  |  |  | 23d |  |  | 이용운 | 80h |  |
| 15 | 2.1.3 | 구글 포토토콜 코드 빌드. | 10d | 2012-02-06 | 2012-02-17 |  |  |  | 23d |  |  | 이용운 | 80h |  |
| 16 | 2.2 | **서버 네트웍 모듈 작성.** | 28.94d | 2012-02-13 A | 2012-03-22 A |  | 100% |  |  |  |  | 조욱래 | 479.52h | 479.52h |
| 17 | 2.2.1 | **시스템데이타 로딩 처리(excel)** | 13d | 2012-02-13 A | 2012-02-29 A |  | 100% |  |  |  |  | 조욱래 | 104h | 104h |
| 18 | 2.2.1.1 | 서버 로딩 처리(리눅스) | 8d | 2012-02-13 A | 2012-02-22 A |  | 100% |  |  |  | start no earlier than 2012-02-13 |  |  |  |
| 19 | 2.2.1.2 | 클라 로딩 처리(C#) | 5d | 2012-02-23 A | 2012-02-29 A | 18 | 100% |  |  |  |  |  |  |  |
| 20 | 2.2.2 | 게임서버 구성( + 클라 접속루틴 C#) | 10d | 2012-03-05 A | 2012-03-16 A |  | 100% |  |  |  |  | 조욱래; 이용운 | 120h | 120h |
| 21 | 2.2.3 | 부하테스트용 클라이언트 프레임 작성(C++) | 3d | 2012-03-19 A | 2012-03-22 A |  | 100% |  |  |  |  | 조욱래 | 24h | 24h |
| 22 | 3 | **서버 게임 플레이 가능한 프로토 타입작업** | 47.06d | 2012-03-22 A | 2012-05-28 |  | 47% | 24.77d | 37d |  |  | 조욱래 | 1441.45h | 687.12h |
| 23 | 3.1 | 로긴- 게임데이타 전송 | 10d | 2012-03-22 A | 2012-04-05 A | 21 | 100% |  |  |  |  | 조욱래 | 80h | 80h |
| 24 | 3.2 | 선수 생성 ,삭제 | 5d | 2012-04-05 A | 2012-04-12 | 23 | 80% | 1d | 26.82d | 0d |  | 조욱래 | 40h | 32h |
| 25 | 3.3 | 팀생성, 삭제 , 선택 | 1d | 2012-04-12 | 2012-04-13 | 24 |  |  | 26.82d | 0d |  | 조욱래 | 8h |  |
| 26 | 3.4 | 대기방( ready , mode선택 , 상대방 전적보기) | 2d | 2012-04-13 | 2012-04-17 | 25 |  |  | 26.82d | 0d |  | 조욱래 | 16h |  |

| ID | WBS | Task | Duration | Start | Finish | Predecessors | Complete | Remaining | Total slack | Free slack | Constraint | Resources | Work | Actual work |
| --- | --- | --- | --- | --- | --- | --- | --- | --- | --- | --- | --- | --- | --- | --- |
| 27 | 3.5 | **게임 한판 플레이** | 19.06d | 2012-04-17 A | 2012-05-14 | 26 | 62% | 7.26d | 22d | 0d |  | 조욱래; 박진모 | 584.97h | 396.79h |
| 28 | 3.5.1 | 게임레디 | 2d | 2012-04-17 A | 2012-04-19 A | 26 | 100% |  |  |  |  | 조욱래; 박진모 | 32h | 32h |
| 29 | 3.5.2 | 라운드 준비 | 2d | 2012-04-17 A | 2012-04-19 A | 26 | 100% |  |  |  |  | 조욱래; 박진모 | 32h | 32h |
| 30 | 3.5.3 | 투수 동작 및 결과판정 | 2d | 2012-04-19 A | 2012-04-23 | 29 | 90% | 0.2d | 29.26d | 0d |  | 조욱래; 박진모 | 32h | 28.8h |
| 31 | 3.5.4 | 타자 동작 및 결과판정 | 3d | 2012-04-23 A | 2012-04-26 | 30 | 90% | 0.3d | 26.56d | 0d |  | 조욱래; 박진모 | 48h | 43.2h |
| 32 | 3.5.5 | 한 라운드 종료 | 2d | 2012-04-26 A | 2012-04-30 | 31 | 90% | 0.2d | 24.76d | 0d |  | 조욱래; 박진모 | 32h | 28.8h |
| 33 | 3.5.6 | 게임 종료 | 3d | 2012-04-30 A | 2012-05-03 | 32 | 90% | 0.3d | 22.06d |  |  | 조욱래; 박진모 | 48h | 43.2h |
| 34 | 3.5.7 | 캐주얼야구_리듬제구시스템 정리_1차업데이트 서버적용 | 2d | 2012-05-04 | 2012-05-07 |  |  |  | 22d | 0d | start no earlier than 2012-05-04 | 조욱래 | 16h |  |
| 35 | 3.5.8 | 서버 예외처리 작업 | 5d | 2012-05-08 | 2012-05-14 | 34 |  |  | 22d |  |  | 조욱래 | 40h |  |
| 36 | 3.6 | **아이템 획득처리** | 3d | 2012-05-15 | 2012-05-17 | 28 |  |  | 22d | 0d |  | 조욱래; 박진모 | 144h |  |
| 37 | 3.6.1 | 1. 게임종료후 보상 | 3d | 2012-05-15 | 2012-05-17 | 27 |  |  | 22d |  |  | 조욱래; 박진모 | 48h |  |
| 38 | 3.6.2 | 2. 상점구매 | 3d | 2012-05-15 | 2012-05-17 | 27 |  |  | 22d |  |  | 조욱래; 박진모 | 48h |  |
| 39 | 3.7 | 인벤토리처리 ( 장착 해제 … ) | 2d | 2012-05-18 | 2012-05-21 | 36 |  |  | 22d | 0d |  | 백훈; 조욱래 | 32h |  |
| 40 | 3.8 | 아이템 강화 (업그레이드) | 5d | 2012-05-22 | 2012-05-28 | 39 |  |  | 30d |  |  | 백훈; 조욱래 | 80h |  |
| 41 | 3.9 | 상점 | 5d | 2012-05-22 | 2012-05-28 | 39 |  |  | 30d |  |  | 백훈; 조욱래 | 80h |  |
| 42 | 4 | 서버 DB 연동 모듈 구성 | 20d | 2012-05-22 | 2012-06-18 | 39 |  |  | 22d |  |  | 박진모 | 160h |  |
| 43 | 5 | **클라작업** | 120d? | 2012-02-02 A | 2012-07-18 |  | 22% | 94.05d? | 0d |  |  | 백훈 | 1448h | 111.94h |
| 44 | 5.1 | **C# 클라이언트 프로토콜 작업 (게임 한판 플레이)** | 120d? | 2012-02-02 A | 2012-07-18 |  | 22% | 94.05d? | 0d |  |  | 백훈 | 960h | 6.4h |
| 48 | 5.1.1 | **5. 서버 설계 ( 조욱래 , 이 용운) 2차작업** | 120d? | 2012-02-02 A | 2012-07-18 |  | 22% | 94.05d? | 0d |  |  |  |  |  |
| 49 | 5.1.1.1 | **인벤토리** | 112d | 2012-02-09 | 2012-07-13 |  |  |  | 3d |  |  |  |  |  |
| 50 | 5.1.1.1.1 | 아이템 귀속 : 유저 -> 선수 | 2d | 2012-07-09 | 2012-07-11 | 63 |  |  | 5.1d |  | start no earlier than 2012-07-05 |  |  |  |
| 51 | 5.1.1.1.2 | 아이템 장착 : 선수 | 2d | 2012-07-12 | 2012-07-13 | 64 |  |  | 3d |  | start no earlier than 2012-07-12 |  |  |  |
| 52 | 5.1.1.1.3 | 소비 아이템 사용 | 2d | 2012-02-09 | 2012-02-10 | 65 |  |  | 112.01d | 0d |  |  |  |  |
| 53 | 5.1.1.2 | **상점** | 3d | 2012-07-13 | 2012-07-17 |  |  |  | 0d |  |  |  |  |  |
| 54 | 5.1.1.2.1 | **구매** | 3d | 2012-07-13 | 2012-07-17 |  |  |  | 0d |  |  |  |  |  |
| 55 | 5.1.1.2.1.1 | 게임머니 아이템 | 3d | 2012-07-13 | 2012-07-17 |  |  |  | 0d |  | start no earlier than 2012-07-13 |  |  |  |

| ID | WBS | Task | Duration | Start | Finish | Predecessors | Complete | Remaining | Total slack | Free slack |
| --- | --- | --- | --- | --- | --- | --- | --- | --- | --- | --- |
| 56 | 5.1.1.3 | **강화** | 1d? | 2012-07-18 | 2012-07-18 |  |  |  | 0d |  |
| 57 | 5.1.1.3.1 | 투수코치- 투수스킬 추가기능( 돈 시간 , 레벨제한) | 1d? | 2012-07-18 | 2012-07-18 | 55 |  |  | 0d |  |
| 58 | 5.1.1.4 | **인게임** | 112.9d? | 2012-02-02 A | 2012-07-09 |  | 43% | 64.71d? | 7.1d |  |
| 59 | 5.1.1.4.1 | **싱글모드 구현** | 7.99d? | 2012-02-02 A | 2012-02-13 |  | 1% | 7.91d? | 112.01d |  |
| 60 | 5.1.1.4.1.1 | 승패 | 1d? | 2012-02-02 A | 2012-02-13 | 52 | 1% | 0.99d? | 112.01d |  |
| 61 | 5.1.1.4.2 | **매치모드** | 112.9d | 2012-02-02 A | 2012-07-09 |  | 45% | 62.09d | 5.1d |  |
| 62 | 5.1.1.4.2.1 | 이벤트 보상 | 8d | 2012-06-25 A | 2012-07-04 A |  | 100% |  |  |  |
| 63 | 5.1.1.4.2.2 | 주자상태처리 | 3d | 2012-02-02 A | 2012-07-09 | 62 | 3% | 2.9d | 5.1d | 0d |
| 64 | 5.1.1.4.2.3 | 게임종료후 재경기처리 | 2d | 2012-02-02 | 2012-02-03 |  |  |  | 116d | 113d |
| 65 | 5.1.1.4.2.4 | 장착 + 소비 아이템 버프적용 | 5d | 2012-02-02 | 2012-02-08 |  |  |  | 112.01d | 0d |
| 66 | 5.1.1.5 | **퀘스트** | 1d? | 2012-02-02 | 2012-02-02 |  |  |  | 119d |  |
| 67 | 5.1.1.5.1 | **도전과제** | 1d? | 2012-02-02 | 2012-02-02 |  |  |  | 119d |  |
| 68 | 5.1.1.5.1.1 | 첫캐릭터 생성시-보상 | 1d? | 2012-02-02 | 2012-02-02 |  |  |  | 119d |  |
| 69 | 5.1.1.5.1.2 | 첫 플레이 보상 | 1d? | 2012-02-02 | 2012-02-02 |  |  |  | 119d |  |
| 70 | 5.1.1.5.1.3 | 첫홈런 보상 | 1d? | 2012-02-02 | 2012-02-02 |  |  |  | 119d |  |
| 71 | 5.1.1.5.1.4 | 첫 탈삼진보상 | 1d? | 2012-02-02 | 2012-02-02 |  |  |  | 119d |  |
| 72 | 5.1.1.5.2 | 일일보상 - 하루에 한번 접속시 | 1d? | 2012-02-02 | 2012-02-02 |  |  |  | 119d |  |
| 73 | 5.1.1.5.3 | 튜토리얼- 했다 안했다. | 0.5d | 2012-02-02 | 2012-02-02 |  |  |  | 119.5d |  |
| 74 | 5.1.1.6 | **랭킹** | 1d? | 2012-02-02 | 2012-02-02 |  |  |  | 119d |  |
| 75 | 5.1.1.6.1 | **시즌(1개월)** | 1d? | 2012-02-02 | 2012-02-02 |  |  |  | 119d |  |
| 76 | 5.1.1.6.1.1 | 홈런 | 1d? | 2012-02-02 | 2012-02-02 |  |  |  | 119d |  |
| 77 | 5.1.1.6.1.2 | 탈삼진 | 1d? | 2012-02-02 | 2012-02-02 |  |  |  | 119d |  |
| 78 | 5.1.1.7 | 공지사항 기능 | 1d? | 2012-02-02 | 2012-02-02 |  |  |  | 119d |  |
| 82 | 6 | **2차 작업할거** | 1d? | 2012-02-02 | 2012-02-02 |  |  |  | 119d |  |
| 83 | 6.1 | 매치모드의 경기 동향 로그 | 1d? | 2012-02-02 | 2012-02-02 |  |  |  | 119d |  |
| 84 | 6.2 | 싱글모드 경기 동향 로그 | 1d? | 2012-02-02 | 2012-02-02 |  |  |  | 119d |  |
| 85 | 6.3 | 아이템 notify system | 1d? | 2012-02-02 | 2012-02-02 |  |  |  | 119d |  |
| 86 | 6.4 | 트레이딩 ,친구 ,길드(구단) | 1d? | 2012-02-02 | 2012-02-02 |  |  |  | 119d |  |

Notes:
- 83: file네오위즈모바일_장현국제작본부00.Project_김기완01.진행중캐주얼야구[DOCU] 게임기획서 / 캐주얼야구 게임기획서 4차 (20120420).docx 참고할것.

| ID | WBS | Task | Duration | Start | Finish | Total slack |
| --- | --- | --- | --- | --- | --- | --- |
| 87 | 6.5 | **강화 2차작업** | 1d? | 2012-02-02 | 2012-02-02 | 119d |
| 88 | 6.5.1 | 장인 | 1d? | 2012-02-02 | 2012-02-02 | 119d |
| 89 | 6.5.2 | 장외 할동 | 1d? | 2012-02-02 | 2012-02-02 | 119d |
| 90 | 6.5.3 | 트레이닝 | 1d? | 2012-02-02 | 2012-02-02 | 119d |
| 91 | 6.6 | 랭킹 2차작업 | 1d? | 2012-02-02 | 2012-02-02 | 119d |
| 92 | 6.7 | 포인트 랭킹(종합) | 1d? | 2012-02-02 | 2012-02-02 | 119d |
| 93 | 6.8 | **상점 2차 작업** | 1d? | 2012-02-02 | 2012-02-02 | 119d |
| 94 | 6.8.1 | 캐쉬머니 아이템 ??? | 1d? | 2012-02-02 | 2012-02-02 | 119d |
