# 캐주얼야구_일정

Schedule from MS Project, 2011-10-24 to 2012-04-20, A marks actual dates.
XP SP3 FINAL

## Calendars

- 표준: Mon-Fri 08:00-12:00, 13:00-17:00; Sat-Sun off.

## Resources

| Resource |
| --- |
| 명 재훈 |
| 황 인숙 |
| 이 용운 |
| 석 근덕 |
| 이 민경 |
| 강 정하 |
| 황 창연 |
| 개발자1 |
| 장 홍탁 |
| 황 인숙; 이 용운 |

## Schedule

| ID | WBS | Task | Duration | Start | Finish | Predecessors | Complete | Remaining | Total slack | Free slack | Constraint | Resources | Work | Actual work |
| --- | --- | --- | --- | --- | --- | --- | --- | --- | --- | --- | --- | --- | --- | --- |
| 1 | 1 | 경과일 | 130d | 2011-10-24 A | 2012-04-20 |  | 50% | 65d | 0d |  | finish no earlier than 2012-04-20 |  |  |  |
| 2 | 2 | **전체일정** | 129.5d? | 2011-10-24 A | 2012-04-20 |  | 42% | 75.33d? | 0.5d |  |  |  | 14440h | 4084h |
| 3 | 2.1 | **프로그래밍** | 129.5d? | 2011-10-24 A | 2012-04-20 |  | 39% | 79.08d? | 0.5d |  |  | 이 용운; 황 인숙; 명 재훈 | 12296h | 3249.69h |
| 4 | 2.1.1 | **툴** | 40d | 2011-10-31 A | 2011-12-23 |  | 96% | 1.45d | 85d |  |  | 이 용운; 황 인숙; 명 재훈 | 2120h | 1160h |
| 5 | 2.1.1.1 | 사전 라이브러리 분석 | 5d | 2011-10-31 A | 2011-11-04 A |  | 100% |  |  |  | start no earlier than 2011-10-31 | 이 용운; 황 인숙; 명 재훈 | 120h | 120h |
| 6 | 2.1.1.2 | 데이터 로더 구현 | 5d | 2011-11-07 A | 2011-11-11 A | 5 | 100% |  |  |  | start no earlier than 2011-11-07 | 이 용운 | 40h | 40h |
| 7 | 2.1.1.3 | 데이터 가공 구현 | 5d | 2011-11-14 A | 2011-11-18 A | 6 | 100% |  |  |  |  | 이 용운 | 40h | 40h |
| 8 | 2.1.1.4 | 원천데이터 로딩 -> 가공 데이터화 작업 | 40d | 2011-10-31 A | 2011-12-23 |  | 95% | 2d | 85d |  | start no earlier than 2011-10-31 | 이 용운; 황 인숙; 명 재훈 | 960h | 912h |
| 9 | 2.1.2 | G센서 | 15d? | 2011-11-07 A | 2011-11-25 A |  | 100% |  |  |  | finish no earlier than 2011-11-25 | 명 재훈 | 120h | 120h |
| 10 | 2.1.3 | **구장** | 5d? | 2011-12-12 A | 2011-12-16 |  | 68% | 1.6d? | 90d |  |  | 명 재훈 | 80h | 54.4h |
| 11 | 2.1.3.1 | 구성 | 1d? | 2011-12-12 A | 2011-12-12 A |  | 100% |  |  |  | start no earlier than 2011-12-12 | 명 재훈 | 8h | 8h |
| 12 | 2.1.3.2 | 홈런존 | 0.5d? | 2011-12-13 A | 2011-12-13 | 11 | 60% | 0.2d? | 92.1d | 0d |  | 명 재훈 | 4h | 2.4h |
| 13 | 2.1.3.3 | 파울존 | 0.5d? | 2011-12-13 A | 2011-12-13 | 12 | 60% | 0.2d? | 91.8d | 0d |  | 명 재훈 | 4h | 2.4h |
| 14 | 2.1.3.4 | 페어존 | 3d? | 2011-12-14 A | 2011-12-16 | 13 | 60% | 1.2d? | 90d |  | start no earlier than 2011-10-26 | 명 재훈 | 24h | 14.4h |
| 15 | 2.1.4 | **투수** | 16d? | 2012-01-16 A | 2012-02-06 |  | 5% | 15.2d? | 54d |  |  | 명 재훈 | 280h | 11.2h |
| 16 | 2.1.4.1 | 투구 | 1d? | 2012-01-16 | 2012-01-16 |  |  |  | 56.7d | 0d | start no earlier than 2012-01-16 | 명 재훈 | 8h |  |
| 17 | 2.1.4.2 | 공궤적 | 1d? | 2012-01-17 A | 2012-01-17 | 16 | 70% | 0.3d? | 56d | 0d |  | 명 재훈 | 8h | 5.6h |
| 18 | 2.1.4.3 | **구종선택** | 3d? | 2012-01-18 | 2012-01-20 |  |  |  | 56d |  |  | 명 재훈 | 48h |  |
| 19 | 2.1.4.3.1 | 구질설명아이콘 | 1d? | 2012-01-18 | 2012-01-18 | 17 |  |  | 56d | 0d | start no earlier than 2011-10-31 | 명 재훈 | 8h |  |
| 20 | 2.1.4.3.2 | 구질연동 | 2d? | 2012-01-19 | 2012-01-20 | 19 |  |  | 56d | 2d |  | 명 재훈 | 16h |  |
| 21 | 2.1.4.4 | **시스템UI** | 4d? | 2012-01-25 | 2012-01-30 |  |  |  | 54d |  |  | 명 재훈 | 64h |  |
| 22 | 2.1.4.4.1 | 구속표시 | 1d? | 2012-01-25 | 2012-01-25 | 20 |  |  | 54d | 0d | start no earlier than 2011-11-03 | 명 재훈 | 8h |  |
| 23 | 2.1.4.4.2 | 구속게이지 | 1d? | 2012-01-26 | 2012-01-26 | 22 |  |  | 54d | 0d |  | 명 재훈 | 8h |  |
| 24 | 2.1.4.4.3 | 스트라익표시 | 1d? | 2012-01-27 | 2012-01-27 | 23 |  |  | 54d | 0d |  | 명 재훈 | 8h |  |
| 25 | 2.1.4.4.4 | 실투표시 | 1d? | 2012-01-30 | 2012-01-30 | 24 |  |  | 54d | 0d |  | 명 재훈 | 8h |  |
| 26 | 2.1.4.5 | 스트라익존 연동 | 3d? | 2012-01-31 | 2012-02-02 | 25 |  |  | 54d | 0d | start no earlier than 2011-11-09 | 명 재훈 | 24h |  |
| 27 | 2.1.4.6 | 리듬제구 | 2d? | 2012-02-03 | 2012-02-06 | 26 |  |  | 54d |  |  | 명 재훈 | 16h |  |

| ID | WBS | Task | Duration | Start | Finish | Predecessors | Complete | Remaining | Total slack | Free slack | Constraint | Resources | Work | Actual work |
| --- | --- | --- | --- | --- | --- | --- | --- | --- | --- | --- | --- | --- | --- | --- |
| 28 | 2.1.5 | **타자** | 10d? | 2011-11-28 A | 2011-12-09 |  | 41% | 5.9d? | 79d |  |  | 명 재훈 | 160h | 41.2h |
| 29 | 2.1.5.1 | 배팅동작 | 1d? | 2011-11-28 | 2011-11-28 |  |  |  | 83.1d | 0d | start no earlier than 2011-11-28 | 명 재훈 | 8h |  |
| 30 | 2.1.5.2 | **시스템UI** | 5d? | 2011-11-29 A | 2011-12-05 |  | 42% | 2.9d? | 81d |  |  |  | 40h | 16.8h |
| 31 | 2.1.5.2.1 | 터치패드 | 1d? | 2011-11-29 | 2011-11-29 | 29 |  |  | 81.9d | 0d | start no earlier than 2011-11-11 | 명 재훈 | 8h |  |
| 32 | 2.1.5.2.2 | 배트컨트롤UI | 3d? | 2011-11-30 A | 2011-12-02 | 31 | 70% | 0.9d? | 81d | 0d |  | 명 재훈 | 24h | 16.8h |
| 33 | 2.1.5.2.3 | 각종표시 (구속/실투/ST) | 1d? | 2011-12-05 | 2011-12-05 | 32 |  |  | 81d | 0d |  | 명 재훈 | 8h |  |
| 34 | 2.1.5.3 | 스트라익존 연동 | 1d? | 2011-12-06 A | 2011-12-06 | 33 | 50% | 0.5d? | 80.5d | 0d | start no earlier than 2011-12-06 | 명 재훈 | 8h | 4h |
| 35 | 2.1.5.4 | 존 배트 크기 연동 | 3d? | 2011-12-07 A | 2011-12-09 | 34 | 50% | 1.5d? | 79d | 0d |  | 명 재훈 | 24h | 12h |
| 36 | 2.1.6 | **구질구현** | 25d? | 2011-12-12 A | 2012-01-13 |  | 5% | 23.8d? | 70d |  |  | 명 재훈 | 336h | 19.2h |
| 37 | 2.1.6.1 | 구질 1차 (12개) | 4d | 2011-12-12 | 2011-12-15 | 35 |  |  | 79d | 0d | start no earlier than 2011-12-12 | 명 재훈 | 32h |  |
| 38 | 2.1.6.2 | 구질 2차 (12개) | 4d | 2011-12-16 | 2011-12-21 | 37 |  |  | 79d | 0d |  | 명 재훈 | 32h |  |
| 39 | 2.1.6.3 | 구질별 제스쳐 | 4d | 2011-12-22 | 2011-12-27 | 38 |  |  | 79d | 0d |  | 명 재훈 | 32h |  |
| 40 | 2.1.6.4 | 타자 타격 구질결정 | 4d | 2011-12-28 | 2012-01-02 | 39 |  |  | 79d |  |  | 명 재훈 | 32h |  |
| 41 | 2.1.6.5 | **타격 구질 공궤적** | 7d? | 2012-01-03 A | 2012-01-11 |  | 17% | 5.8d? | 58d |  |  |  | 56h | 9.6h |
| 42 | 2.1.6.5.1 | 공 궤적 | 4d | 2012-01-03 A | 2012-01-06 |  | 30% | 2.8d | 58d | 0d | start no earlier than 2012-01-03 | 명 재훈 | 32h | 9.6h |
| 43 | 2.1.6.5.2 | 리바운드 처리 | 3d? | 2012-01-09 | 2012-01-11 | 42 |  |  | 58d | 0d |  | 명 재훈 | 24h |  |
| 44 | 2.1.6.6 | 공 궤적 꼬리 이펙트 | 2d? | 2012-01-12 | 2012-01-13 | 43 |  |  | 58d | 0d |  | 명 재훈 | 16h |  |
| 45 | 2.1.7 | **카메라** | 14d? | 2012-01-16 | 2012-02-02 |  |  |  | 56d |  |  | 명 재훈 | 192h |  |
| 46 | 2.1.7.1 | 투수뷰 | 2d? | 2012-01-16 | 2012-01-17 | 44 |  |  | 58d | 0d | start no earlier than 2011-11-10 | 명 재훈 | 16h |  |
| 47 | 2.1.7.2 | 타자뷰 | 2d? | 2012-01-18 | 2012-01-19 | 46 |  |  | 58d | 0d |  | 명 재훈 | 16h |  |
| 48 | 2.1.7.3 | 투구후 뷰 | 4d | 2012-01-20 | 2012-01-27 | 47 |  |  | 56d | 0d |  | 명 재훈 | 32h |  |
| 49 | 2.1.7.4 | 배팅후 뷰 | 4d | 2012-01-30 | 2012-02-02 | 48 |  |  | 56d |  |  | 명 재훈 | 32h |  |
| 50 | 2.1.8 | 이펙트 | 2d? | 2011-11-30 | 2011-12-01 |  |  |  | 89.5d | 0d | start no earlier than 2011-11-30 | 명 재훈 | 16h |  |
| 51 | 2.1.9 | **AI** | 8d | 2011-12-02 | 2011-12-13 |  |  |  | 89.5d |  |  | 명 재훈 | 128h |  |
| 52 | 2.1.9.1 | 타자 | 4d | 2011-12-02 | 2011-12-07 | 50 |  |  | 89.5d | 0d | start no earlier than 2011-12-02 | 명 재훈 | 32h |  |
| 53 | 2.1.9.2 | 투수 | 4d | 2011-12-08 | 2011-12-13 | 52 |  |  | 89.5d | 0d |  | 명 재훈 | 32h |  |

| ID | WBS | Task | Duration | Start | Finish | Predecessors | Complete | Remaining | Total slack | Free slack | Constraint | Resources | Work | Actual work |
| --- | --- | --- | --- | --- | --- | --- | --- | --- | --- | --- | --- | --- | --- | --- |
| 54 | 2.1.10 | **포수** | 3d? | 2011-12-14 | 2011-12-16 |  |  |  | 89.5d |  |  | 명 재훈 | 48h |  |
| 55 | 2.1.10.1 | 공 위치별 잡기 | 3d? | 2011-12-14 | 2011-12-16 | 53 |  |  | 89.5d | 0d | start no earlier than 2011-11-10 | 명 재훈 | 24h |  |
| 56 | 2.1.11 | **심판** | 0.5d? | 2011-12-19 | 2011-12-19 |  |  |  | 89.5d |  |  | 명 재훈 | 8h |  |
| 57 | 2.1.11.1 | 판정 포즈 | 0.5d? | 2011-12-19 | 2011-12-19 | 55 |  |  | 89.5d |  | start no earlier than 2011-11-01 | 명 재훈 | 4h |  |
| 58 | 2.1.12 | **메뉴구성** | 109.5d? | 2011-11-21 A | 2012-04-20 |  | 8% | 101.05d? | 0.5d |  |  | 황 인숙 | 2316h | 141.72h |
| 59 | 2.1.12.1 | **전체 흐름 정리** | 2d? | 2011-11-21 A | 2011-11-22 A |  | 100% |  |  |  |  | 황 인숙 | 32h | 32h |
| 60 | 2.1.12.1.1 | 구성 | 1d? | 2011-11-21 A | 2011-11-21 A |  | 100% |  |  |  | start no earlier than 2011-11-21 | 황 인숙 | 8h | 8h |
| 61 | 2.1.12.1.2 | 연결 처리 | 1d? | 2011-11-22 A | 2011-11-22 A | 60 | 100% |  |  |  |  | 황 인숙 | 8h | 8h |
| 62 | 2.1.12.2 | **메인메뉴** | 16d? | 2011-11-23 A | 2011-12-14 |  | 40% | 9.6d? | 2.6d |  |  | 황 인숙 | 168h | 32h |
| 63 | 2.1.12.2.1 | 내부 작업 | 2d? | 2011-11-23 A | 2011-11-24 A | 61 | 100% |  |  |  | start no earlier than 2011-10-28 | 황 인숙 | 16h | 16h |
| 64 | 2.1.12.2.2 | UI 구성 | 3d? | 2011-12-12 | 2011-12-14 | 63 |  |  | 2.6d | 0d | start no earlier than 2011-12-12 | 황 인숙 | 24h |  |
| 65 | 2.1.12.3 | **선수 생성 및 선택** | 8d | 2011-12-15 A | 2011-12-26 |  | 15% | 6.8d | 1.4d |  |  | 황 인숙 | 128h | 19.2h |
| 66 | 2.1.12.3.1 | 내부 작업 | 4d | 2011-12-15 A | 2011-12-20 | 64 | 30% | 2.8d | 1.4d | 0d | start no earlier than 2011-11-02 | 황 인숙 | 32h | 9.6h |
| 67 | 2.1.12.3.2 | UI 구성 | 4d | 2011-12-21 | 2011-12-26 | 66 |  |  | 1.4d | 0d |  | 황 인숙 | 32h |  |
| 68 | 2.1.12.4 | **게임룸** | 9d? | 2011-12-27 | 2012-01-06 |  |  |  | 2.8d |  |  | 황 인숙 | 144h |  |
| 69 | 2.1.12.4.1 | 내부 작업 | 5d | 2011-12-27 | 2012-01-02 | 67 |  |  | 1.4d | 0d | start no earlier than 2011-11-16 | 황 인숙 | 40h |  |
| 70 | 2.1.12.4.2 | UI 구성 | 4d? | 2012-01-03 | 2012-01-06 | 69 |  |  | 1.4d | 0d |  | 황 인숙 | 32h |  |
| 71 | 2.1.12.5 | **선수소개** | 4d | 2012-01-09 A | 2012-01-12 |  | 25% | 3d | 1.8d |  |  | 황 인숙 | 64h | 16h |
| 72 | 2.1.12.5.1 | 내부 작업 | 2d | 2012-01-09 A | 2012-01-10 | 70 | 50% | 1d | 1.8d | 0d |  | 황 인숙 | 16h | 8h |
| 73 | 2.1.12.5.2 | UI 구성 | 2d | 2012-01-11 | 2012-01-12 | 72 |  |  | 1.8d | 0d |  | 황 인숙 | 16h |  |
| 74 | 2.1.12.6 | **공통 UI 모듈** | 4d? | 2012-01-13 A | 2012-01-18 |  | 10% | 3.6d? | 1.4d |  |  | 황 인숙 | 64h | 6.4h |
| 75 | 2.1.12.6.1 | 팝업 | 2d? | 2012-01-13 | 2012-01-16 | 73 |  |  | 1.8d | 0d | start no earlier than 2011-11-30 | 황 인숙 | 16h |  |
| 76 | 2.1.12.6.2 | 공통 UI | 2d? | 2012-01-17 A | 2012-01-18 | 75 | 20% | 1.6d? | 1.4d | 0d |  | 황 인숙 | 16h | 3.2h |
| 77 | 2.1.12.7 | **옵션** | 5d? | 2012-01-19 | 2012-01-25 |  |  |  | 1.4d |  |  | 황 인숙 | 48h |  |
| 78 | 2.1.12.7.1 | 내부 작업 | 2d? | 2012-01-19 | 2012-01-20 | 76 |  |  | 1.4d |  | start no earlier than 2011-12-06 | 황 인숙 | 16h |  |
| 79 | 2.1.12.7.2 | UI 구성 | 1d? | 2012-01-25 | 2012-01-25 | 78 |  |  | 1.4d | 0d |  | 황 인숙 | 8h |  |

| ID | WBS | Task | Duration | Start | Finish | Predecessors | Complete | Remaining | Total slack | Free slack | Constraint | Resources | Work | Actual work |
| --- | --- | --- | --- | --- | --- | --- | --- | --- | --- | --- | --- | --- | --- | --- |
| 80 | 2.1.12.8 | **샵** | 14d? | 2012-02-10 | 2012-02-29 |  |  |  | 0.5d |  |  | 황 인숙 | 224h |  |
| 81 | 2.1.12.8.1 | 내부 작업 | 5d | 2012-02-10 | 2012-02-16 | 115 |  |  | 0.5d | 0d | start no earlier than 2011-12-26 | 황 인숙 | 40h |  |
| 82 | 2.1.12.8.2 | UI 구성 | 4d | 2012-02-17 | 2012-02-22 | 81 |  |  | 0.5d | 0d |  | 황 인숙 | 32h |  |
| 83 | 2.1.12.8.3 | 결제 | 2d? | 2012-02-23 | 2012-02-24 | 82 |  |  | 0.5d | 0d |  | 황 인숙 | 16h |  |
| 84 | 2.1.12.8.4 | 적용 | 3d? | 2012-02-27 | 2012-02-29 | 83 |  |  | 0.5d | 0d |  | 황 인숙 | 24h |  |
| 85 | 2.1.12.9 | **인벤토리** | 10d? | 2012-03-01 | 2012-03-14 |  |  |  | 0.5d |  |  | 황 인숙 | 160h |  |
| 86 | 2.1.12.9.1 | 내부 작업 | 4d | 2012-03-01 | 2012-03-06 | 84 |  |  | 0.5d | 0d | start no earlier than 2012-01-17 | 황 인숙 | 32h |  |
| 87 | 2.1.12.9.2 | UI 구성 | 4d? | 2012-03-07 | 2012-03-12 | 86 |  |  | 0.5d | 0d |  | 황 인숙 | 32h |  |
| 88 | 2.1.12.9.3 | 적용 | 2d? | 2012-03-13 | 2012-03-14 | 87 |  |  | 0.5d | 0d |  | 황 인숙 | 16h |  |
| 89 | 2.1.12.10 | **피망플러스 & 공지** | 7d? | 2012-03-15 | 2012-03-23 |  |  |  | 0.5d |  |  | 황 인숙 | 112h |  |
| 90 | 2.1.12.10.1 | 내부 작업 | 3d? | 2012-03-15 | 2012-03-19 | 88 |  |  | 0.5d | 0d | start no earlier than 2012-01-06 | 황 인숙 | 24h |  |
| 91 | 2.1.12.10.2 | UI 구성 | 2d? | 2012-03-20 | 2012-03-21 | 90 |  |  | 0.5d | 0d |  | 황 인숙 | 16h |  |
| 92 | 2.1.12.10.3 | 적용 | 2d | 2012-03-22 | 2012-03-23 | 91 |  |  | 0.5d | 0d |  | 황 인숙 | 16h |  |
| 93 | 2.1.12.11 | **강화메뉴** | 15d? | 2012-03-26 | 2012-04-13 |  |  |  | 0.5d |  |  | 황 인숙 | 240h |  |
| 94 | 2.1.12.11.1 | 내부 작업 | 8d | 2012-03-26 | 2012-04-04 | 92 |  |  | 0.5d | 0d | start no earlier than 2012-02-10 | 황 인숙 | 64h |  |
| 95 | 2.1.12.11.2 | UI 구성 | 4d | 2012-04-05 | 2012-04-10 | 94 |  |  | 0.5d | 0d |  | 황 인숙 | 32h |  |
| 96 | 2.1.12.11.3 | 적용 | 3d? | 2012-04-11 | 2012-04-13 | 95 |  |  | 0.5d | 0d |  | 황 인숙 | 24h |  |
| 97 | 2.1.12.12 | **로고&인트로&타이틀** | 4.5d? | 2012-04-16 | 2012-04-20 |  |  |  | 0.5d |  |  | 황 인숙 | 72h |  |
| 98 | 2.1.12.12.1 | 내부 작업 | 1d? | 2012-04-16 | 2012-04-16 | 96 |  |  | 0.5d | 0d | start no earlier than 2011-12-23 | 황 인숙 | 8h |  |
| 99 | 2.1.12.12.2 | UI 구성 | 3.5d? | 2012-04-17 | 2012-04-20 | 98 |  |  | 0.5d |  |  | 황 인숙 | 28h |  |
| 100 | 2.1.13 | **게임화면** | 11d? | 2012-01-26 A | 2012-02-09 |  | 14% | 9.46d? | 51d |  |  | 황 인숙 | 328h | 45.92h |
| 101 | 2.1.13.1 | **플레이 이전 경기 정보** | 2d? | 2012-01-26 | 2012-01-27 |  |  |  | 1.4d |  |  | 황 인숙 | 32h |  |
| 102 | 2.1.13.1.1 | 내부 작업 | 1d? | 2012-01-26 | 2012-01-26 | 79 |  |  | 1.4d | 0d | start no earlier than 2011-12-09 | 황 인숙 | 8h |  |
| 103 | 2.1.13.1.2 | UI 구성 | 1d? | 2012-01-27 | 2012-01-27 | 102 |  |  | 1.4d | 0d |  | 황 인숙 | 8h |  |

| ID | WBS | Task | Duration | Start | Finish | Predecessors | Complete | Remaining | Total slack | Free slack | Constraint | Resources | Work | Actual work |
| --- | --- | --- | --- | --- | --- | --- | --- | --- | --- | --- | --- | --- | --- | --- |
| 104 | 2.1.13.2 | **플레이 도중 경기 정보** | 2d? | 2012-01-30 | 2012-01-31 |  |  |  | 1.4d |  |  | 황 인숙 | 32h |  |
| 105 | 2.1.13.2.1 | 내부 작업 | 1d? | 2012-01-30 | 2012-01-30 | 103 |  |  | 1.4d | 0d | start no earlier than 2011-10-31 | 황 인숙 | 8h |  |
| 106 | 2.1.13.2.2 | UI 구성 | 1d? | 2012-01-31 | 2012-01-31 | 105 |  |  | 1.4d | 0d |  | 황 인숙 | 8h |  |
| 107 | 2.1.13.3 | **플레이 도중 선수 정보** | 2d? | 2012-02-01 | 2012-02-02 |  |  |  | 1.4d |  |  | 황 인숙 | 32h |  |
| 108 | 2.1.13.3.1 | 내부 작업 | 1d? | 2012-02-01 | 2012-02-01 | 106 |  |  | 1.4d | 0d | start no earlier than 2011-11-02 | 황 인숙 | 8h |  |
| 109 | 2.1.13.3.2 | UI 구성 | 1d? | 2012-02-02 | 2012-02-02 | 108 |  |  | 1.4d | 0d |  | 황 인숙 | 8h |  |
| 110 | 2.1.13.4 | **경기 결과** | 3d? | 2012-02-03 | 2012-02-07 |  |  |  | 1.4d |  |  | 황 인숙 | 48h |  |
| 111 | 2.1.13.4.1 | 내부 작업 | 2d? | 2012-02-03 | 2012-02-06 | 109 |  |  | 1.4d | 0d | start no earlier than 2011-11-04 | 황 인숙 | 16h |  |
| 112 | 2.1.13.4.2 | UI 구성 | 1d? | 2012-02-07 | 2012-02-07 | 111 |  |  | 1.4d | 0d |  | 황 인숙 | 8h |  |
| 113 | 2.1.13.5 | **게임중 메뉴** | 2d? | 2012-02-08 A | 2012-02-09 |  | 45% | 1.1d? | 0.5d |  |  | 황 인숙 | 32h | 14.4h |
| 114 | 2.1.13.5.1 | 내부 작업 | 1.5d? | 2012-02-08 A | 2012-02-09 | 112 | 60% | 0.6d? | 0.5d | 0d | start no earlier than 2011-11-09 | 황 인숙 | 12h | 7.2h |
| 115 | 2.1.13.5.2 | UI 구성 | 0.5d? | 2012-02-09 | 2012-02-09 | 114 |  |  | 0.5d | 0d |  | 황 인숙 | 4h |  |
| 116 | 2.1.13.6 | **선수 소개** | 4d | 2012-01-26 A | 2012-01-31 |  | 30% | 2.8d | 58d |  |  | 황 인숙 | 64h | 19.2h |
| 117 | 2.1.13.6.1 | 내부 작업 | 2d | 2012-01-26 A | 2012-01-27 |  | 60% | 0.8d | 58d | 0d | start no earlier than 2012-01-26 | 황 인숙 | 16h | 9.6h |
| 118 | 2.1.13.6.2 | UI 구성 | 2d | 2012-01-30 | 2012-01-31 | 117 |  |  | 58d |  |  | 황 인숙 | 16h |  |
| 119 | 2.1.14 | **기반 작업** | 40d? | 2011-10-24 A | 2011-12-16 |  | 87% | 5.37d? | 90d |  |  | 이 용운 | 1312h | 486.67h |
| 120 | 2.1.14.1 | **아바타 시스템** | 40d? | 2011-10-24 A | 2011-12-16 |  | 85% | 6d? | 90d |  |  | 이 용운 | 400h | 108h |
| 121 | 2.1.14.1.1 | 아바타 시스템 분석 | 5d? | 2011-10-24 A | 2011-10-28 A |  | 100% |  |  |  | start no earlier than 2011-10-24 | 이 용운 | 40h | 40h |
| 122 | 2.1.14.1.2 | 아바타 시스템 구조 적용 | 5d? | 2011-12-12 A | 2011-12-16 |  | 70% | 1.5d? | 90d |  | start no earlier than 2011-12-12 | 이 용운 | 40h | 28h |
| 123 | 2.1.14.2 | 데이터 매니저 구축 | 8d? | 2011-11-28 A | 2011-12-07 |  | 50% | 4d? | 97d |  | finish no earlier than 2011-12-07 | 황 인숙 | 64h | 32h |
| 124 | 2.1.14.3 | **프로젝트 관리 시스템 구축** | 8d? | 2011-11-07 A | 2011-11-16 A |  | 100% |  |  |  |  | 이 용운 | 128h | 128h |
| 125 | 2.1.14.3.1 | 소스 및 리소스 관리 서버 SVN 구축 | 1d? | 2011-11-07 A | 2011-11-07 A |  | 100% |  |  |  | start no earlier than 2011-11-07 | 이 용운 | 8h | 8h |
| 126 | 2.1.14.3.2 | 소스 자동빌드 시스템 허드슨 서버 구축 | 3d | 2011-11-08 A | 2011-11-10 A | 125 | 100% |  |  |  |  | 이 용운 | 24h | 24h |
| 127 | 2.1.14.3.3 | 관리/공유용 웹 보드 구축 | 1d? | 2011-11-11 A | 2011-11-11 A | 126 | 100% |  |  |  |  | 이 용운 | 8h | 8h |
| 128 | 2.1.14.3.4 | 버그 관리 웹 보드 맨티스 구축 | 1d? | 2011-11-14 A | 2011-11-14 A | 127 | 100% |  |  |  | start no earlier than 2011-11-03 | 이 용운 | 8h | 8h |
| 129 | 2.1.14.3.5 | 사후 처리용 심볼 서버 구축 | 2d | 2011-11-15 A | 2011-11-16 A | 128 | 100% |  |  |  |  | 이 용운 | 16h | 16h |

| ID | WBS | Task | Duration | Start | Finish | Predecessors | Complete | Remaining | Total slack | Free slack | Constraint | Resources | Work | Actual work |
| --- | --- | --- | --- | --- | --- | --- | --- | --- | --- | --- | --- | --- | --- | --- |
| 130 | 2.1.14.4 | **자동패치 시스템 구축** | 15d | 2011-11-07 A | 2011-11-25 |  | 99% | 0d | 0d |  |  | 황 인숙; 이 용운 | 400h | 160h |
| 131 | 2.1.14.4.1 | svn 이벤트 구조 및 perl스크립트 분석 | 5d | 2011-11-07 A | 2011-11-11 A |  | 100% |  |  |  | start no earlier than 2011-11-07 | 황 인숙 | 40h | 40h |
| 132 | 2.1.14.4.2 | 패처 자동 실행 | 5d | 2011-11-14 A | 2011-11-18 A | 131 | 100% |  |  |  |  | 황 인숙; 이 용운 | 80h | 80h |
| 133 | 2.1.14.4.3 | DB 데이터 업데이트 구현 | 5d | 2011-11-21 A | 2011-11-25 A | 132 | 100% |  |  |  |  | 이 용운 | 40h | 40h |
| 134 | 2.1.15 | **서버** | 63d? | 2011-11-14 A | 2012-02-08 |  | 41% | 37.23d? | 52d |  |  | 이 용운 | 1240h | 356.73h |
| 135 | 2.1.15.1 | **테스트 서버 구축** | 63d? | 2011-11-14 A | 2012-02-08 |  | 41% | 37.23d? | 52d |  |  | 이 용운 | 752h | 232.36h |
| 136 | 2.1.15.1.1 | 업데이트 시스템 구축 | 5d | 2011-11-14 A | 2011-11-18 |  | 70% | 1.5d | 110d |  | start no earlier than 2011-11-14 | 이 용운 | 40h | 28h |
| 137 | 2.1.15.1.2 | 다운로드 테스트용 웹 서버 구축 | 5d? | 2011-11-28 A | 2011-12-02 A | 136 | 100% |  |  |  |  | 이 용운 | 40h | 40h |
| 138 | 2.1.15.1.3 | 클라이언트 서버 연결 | 5d? | 2011-12-05 A | 2011-12-09 A | 137 | 100% |  |  |  |  | 이 용운 | 40h | 40h |
| 139 | 2.1.15.1.4 | 프로토콜 및 데이터 구조 설계 | 5d? | 2011-12-12 | 2011-12-16 | 138 |  |  | 59d | 0d |  | 이 용운 | 40h |  |
| 140 | 2.1.15.1.5 | 패킷 전송 설계 | 5d? | 2012-01-19 | 2012-01-27 | 148 |  |  | 52d | 0d |  | 이 용운 | 40h |  |
| 141 | 2.1.15.1.6 | 추가 컨텐츠 별 업데이트 작업 | 8d? | 2012-01-30 | 2012-02-08 | 140 |  |  | 52d |  |  | 이 용운 | 64h |  |
| 142 | 2.1.16 | **클라이언트** | 23d? | 2011-12-19 | 2012-01-18 |  |  |  | 54d |  |  | 이 용운 | 552h |  |
| 143 | 2.1.16.1 | **패킷 전송** | 23d? | 2011-12-19 | 2012-01-18 |  |  |  | 54d |  |  | 이 용운 | 368h |  |
| 144 | 2.1.16.1.1 | 서버로부터 오는 메시지 수신 기능 구현 | 5d | 2011-12-19 | 2011-12-23 |  |  |  | 54d | 0d | start no earlier than 2011-12-19 | 이 용운 | 40h |  |
| 145 | 2.1.16.1.2 | 서버로 부터 패킷 받기 처리 | 2.5d? | 2011-12-26 | 2011-12-28 | 144 |  |  | 67d | 0d | start no earlier than 2011-12-20 | 이 용운 | 20h |  |
| 146 | 2.1.16.1.3 | 서버로 데이터 전송 보내기 처리 | 2.5d? | 2011-12-28 | 2011-12-30 | 145 |  |  | 67d | 0d |  | 이 용운 | 20h |  |
| 147 | 2.1.16.1.4 | 받은 데이터 관리 구조 설계 | 5d? | 2012-01-02 | 2012-01-06 | 146 |  |  | 67d | 0d |  | 이 용운 | 40h |  |
| 148 | 2.1.16.1.5 | 추가 컨텐츠 별 업데이트 작업 | 8d? | 2012-01-09 | 2012-01-18 | 147 |  |  | 67d |  |  | 이 용운 | 64h |  |
| 149 | 2.2 | **그래픽** | 118d? | 2011-11-01 A | 2012-04-12 |  | 47% | 62.82d? | 6d |  |  |  | 2144h | 834.31h |
| 150 | 2.2.1 | **캐릭터** | 71d? | 2011-11-01 A | 2012-02-07 |  | 68% | 22.82d? | 53d |  |  |  | 1224h | 554.31h |
| 151 | 2.2.1.1 | **애니메이션** | 41d? | 2011-11-01 A | 2011-12-27 |  | 55% | 18.6d? | 83d |  |  |  | 320h | 179.2h |
| 152 | 2.2.1.1.1 | **투수** | 28.5d? | 2011-11-01 A | 2011-12-09 |  | 74% | 7.45d? | 95.5d |  |  |  | 156h | 115.2h |
| 153 | 2.2.1.1.1.1 | 투구폼1,2 | 4d? | 2011-11-01 A | 2011-11-04 A |  | 100% |  |  |  | start no earlier than 2011-11-01 | 이 민경 | 32h | 32h |
| 154 | 2.2.1.1.1.2 | 투구폼3,4 | 4d? | 2011-11-07 A | 2011-11-10 A | 153 | 100% |  |  |  |  | 이 민경 | 32h | 32h |
| 155 | 2.2.1.1.1.3 | Idle & Startup | 6d | 2011-11-11 A | 2011-11-18 | 154 | 83% | 1d | 110d |  |  | 이 민경 | 48h | 40h |
| 156 | 2.2.1.1.1.4 | 투수 After (세리머니) | 2d? | 2011-12-01 A | 2011-12-02 |  | 70% | 0.6d? | 100d |  | start no earlier than 2011-12-01 | 이 민경 | 16h | 11.2h |
| 157 | 2.2.1.1.1.5 | 라커룸 대기포즈 | 2d? | 2011-12-05 | 2011-12-06 | 161 |  |  | 84d | 0d | start no earlier than 2011-12-05 | 이 민경 | 16h |  |
| 158 | 2.2.1.1.1.6 | 승리/패배 포즈 | 1.5d? | 2011-12-08 | 2011-12-09 | 162 |  |  | 73d | 0d |  | 이 민경 | 12h |  |

| ID | WBS | Task | Duration | Start | Finish | Predecessors | Complete | Remaining | Total slack | Free slack | Constraint | Resources | Work | Actual work |
| --- | --- | --- | --- | --- | --- | --- | --- | --- | --- | --- | --- | --- | --- | --- |
| 159 | 2.2.1.1.2 | **타자** | 16d? | 2011-11-21 A | 2011-12-12 |  | 76% | 3.81d? | 84d |  |  |  | 84h | 64h |
| 160 | 2.2.1.1.2.1 | 타격폼 Ready&Swing | 5d? | 2011-11-21 A | 2011-11-25 A | 155 | 100% |  |  |  | start no earlier than 2011-11-21 | 이 민경 | 40h | 40h |
| 161 | 2.2.1.1.2.2 | 타자 After (헛스윙) | 3d? | 2011-11-28 A | 2011-11-30 A | 160 | 100% |  |  |  |  | 이 민경 | 24h | 24h |
| 162 | 2.2.1.1.2.3 | 라커룸 대기포즈 | 1d? | 2011-12-07 | 2011-12-07 | 157 |  |  | 73d | 0d | finish no earlier than 2011-12-07 | 이 민경 | 8h |  |
| 163 | 2.2.1.1.2.4 | 승리/패배 포즈 | 1.5d? | 2011-12-09 | 2011-12-12 | 158 |  |  | 73d | 0d | finish no earlier than 2011-12-09 | 이 민경 | 12h |  |
| 164 | 2.2.1.1.3 | **여성** | 5d? | 2011-12-13 | 2011-12-19 |  |  |  | 84d |  |  |  | 40h |  |
| 165 | 2.2.1.1.3.1 | 애니메이션 전반적 수정 | 5d? | 2011-12-13 | 2011-12-19 | 163 |  |  | 73d | 0d | start no earlier than 2011-12-06 | 이 민경 | 40h |  |
| 166 | 2.2.1.1.4 | **기타** | 5d? | 2011-12-20 | 2011-12-26 |  |  |  | 84d |  |  |  | 40h |  |
| 167 | 2.2.1.1.4.1 | 공통 헤어 (필요시) | 5d? | 2011-12-20 | 2011-12-26 | 165 |  |  | 73d |  | start no earlier than 2011-11-03 | 이 민경 | 40h |  |
| 168 | 2.2.1.1.5 | 포수 포구 9종 | 0.5d? | 2011-12-27 | 2011-12-27 |  |  |  | 83d | 0d | start no earlier than 2011-12-27 |  |  |  |
| 169 | 2.2.1.1.6 | 판정 3종 (플레이볼 포함) | 0.5d? | 2011-12-27 | 2011-12-27 | 168 |  |  | 83d |  |  |  |  |  |
| 170 | 2.2.1.2 | **아이템** | 67d? | 2011-11-07 A | 2012-02-07 |  | 79% | 13.96d? | 53d |  |  |  | 904h | 375.11h |
| 171 | 2.2.1.2.1 | **3D오브젝트** | 67d? | 2011-11-07 A | 2012-02-07 |  | 79% | 13.96d? | 53d |  |  | 장 홍탁 | 904h | 375.11h |
| 172 | 2.2.1.2.1.1 | **필수아이템** | 2d? | 2011-11-07 A | 2011-11-08 A |  | 100% |  |  |  |  |  | 32h | 32h |
| 173 | 2.2.1.2.1.1.1 | 글러브/배트/슈즈 15종 | 2d? | 2011-11-07 A | 2011-11-08 A |  | 100% |  |  |  | start no earlier than 2011-11-07 | 장 홍탁 | 16h | 16h |
| 174 | 2.2.1.2.1.1.2 | 헬멧/모자/장갑 15종 | 2d? | 2011-11-07 A | 2011-11-08 A |  | 100% |  |  |  | start no earlier than 2011-11-07 | 장 홍탁 | 16h | 16h |
| 175 | 2.2.1.2.1.2 | **헤어아이템** | 3d? | 2011-11-09 A | 2011-11-11 A |  | 100% |  |  |  |  |  | 48h | 48h |
| 176 | 2.2.1.2.1.2.1 | 헤어 남자 5X5 | 3d? | 2011-11-09 A | 2011-11-11 A |  | 100% |  |  |  | start no earlier than 2011-11-09 | 장 홍탁 | 24h | 24h |
| 177 | 2.2.1.2.1.2.2 | 헤어 여자 5X5 | 3d? | 2011-11-09 A | 2011-11-11 A |  | 100% |  |  |  | start no earlier than 2011-11-09 | 장 홍탁 | 24h | 24h |
| 178 | 2.2.1.2.1.3 | **선택아이템** | 62d? | 2011-11-14 A | 2012-02-07 |  | 74% | 16.32d? | 53d |  |  |  | 304h | 224h |
| 179 | 2.2.1.2.1.3.1 | 손목/암가드/풋가드 15종 | 3d? | 2011-11-14 A | 2011-11-16 A |  | 100% |  |  |  | start no earlier than 2011-11-14 | 장 홍탁 | 24h | 24h |
| 180 | 2.2.1.2.1.3.2 | 액세서리 9종 | 3d? | 2011-11-14 A | 2011-11-16 A |  | 100% |  |  |  | start no earlier than 2011-11-14 | 장 홍탁 | 24h | 24h |
| 181 | 2.2.1.2.1.3.3 | 구장1 모델링 | 2d? | 2011-12-05 A | 2011-12-06 A |  | 100% |  |  |  | start no earlier than 2011-12-05 | 이 민경 | 16h | 16h |
| 182 | 2.2.1.2.1.3.4 | 구장1 매핑 | 3d | 2011-12-07 A | 2011-12-14 A | 181 | 100% |  |  |  |  | 이 민경 | 24h | 24h |
| 183 | 2.2.1.2.1.3.5 | 구장1 관중 시퀀스 애니 | 5d | 2011-12-22 A | 2011-12-28 A |  | 100% |  |  |  | start no earlier than 2011-12-19 | 이 민경 | 40h | 40h |
| 184 | 2.2.1.2.1.3.6 | 구장1 원경 이미지 | 2d | 2011-12-29 A | 2011-12-30 A | 183 | 100% |  |  |  |  | 이 민경 | 16h | 16h |
| 185 | 2.2.1.2.1.3.7 | 구장2 모델링 | 2d | 2012-01-09 A | 2012-01-10 A |  | 100% |  |  |  | start no earlier than 2012-01-09 | 이 민경 | 16h | 16h |
| 186 | 2.2.1.2.1.3.8 | 구장2 매핑 | 3d | 2012-01-11 A | 2012-01-13 A | 185 | 100% |  |  |  |  | 이 민경 | 24h | 24h |
| 187 | 2.2.1.2.1.3.9 | 구장2 관중 시퀀스 애니 | 3d | 2012-01-16 A | 2012-01-18 A | 186 | 100% |  |  |  |  | 이 민경 | 24h | 24h |
| 188 | 2.2.1.2.1.3.10 | 구장2 원경 이미지 | 2d | 2012-01-19 A | 2012-01-20 A | 187 | 100% |  |  |  |  | 이 민경 | 16h | 16h |
| 189 | 2.2.1.2.1.3.11 | 구장3 모델링 | 2d | 2012-01-25 | 2012-01-26 | 188 |  |  | 53d | 0d |  | 이 민경 | 16h |  |
| 190 | 2.2.1.2.1.3.12 | 구장3 매핑 | 3d | 2012-01-27 | 2012-01-31 | 189 |  |  | 53d | 0d |  | 이 민경 | 24h |  |
| 191 | 2.2.1.2.1.3.13 | 구장3 관중 시퀀스 애니 | 2d | 2012-02-01 | 2012-02-02 | 190 |  |  | 53d | 0d |  | 이 민경 | 16h |  |
| 192 | 2.2.1.2.1.3.14 | 구장3 원경 이미지 | 3d | 2012-02-03 | 2012-02-07 | 191 |  |  | 53d |  |  | 이 민경 | 24h |  |

| ID | WBS | Task | Duration | Start | Finish | Predecessors | Complete | Remaining | Total slack | Free slack | Constraint | Resources | Work | Actual work |
| --- | --- | --- | --- | --- | --- | --- | --- | --- | --- | --- | --- | --- | --- | --- |
| 193 | 2.2.2 | **UI** | 74d? | 2012-01-02 A | 2012-04-12 |  | 3% | 71.94d? | 6d |  |  |  | 576h | 16h |
| 194 | 2.2.2.1 | UI디자인컨셉 | 10d? | 2012-01-02 A | 2012-01-13 |  | 20% | 8d? | 8d | 0d | start no earlier than 2011-10-31 | 강 정하 | 80h | 16h |
| 195 | 2.2.2.2 | 게임화면 - 타자 | 6d? | 2012-01-16 | 2012-01-25 | 194 |  |  | 6d | 0d |  | 강 정하 | 48h |  |
| 196 | 2.2.2.3 | 게임화면 - 투수 | 5d? | 2012-01-26 | 2012-02-01 | 195 |  |  | 6d | 0d |  | 강 정하 | 40h |  |
| 197 | 2.2.2.4 | 게임화면 - 결과창 | 3d? | 2012-02-02 | 2012-02-06 | 196 |  |  | 6d | 0d |  | 강 정하 | 24h |  |
| 198 | 2.2.2.5 | 메인화면 | 7d? | 2012-02-07 | 2012-02-15 | 197 |  |  | 6d | 0d |  | 강 정하 | 56h |  |
| 199 | 2.2.2.6 | 게임방 | 5d? | 2012-02-16 | 2012-02-22 | 198 |  |  | 6d | 0d |  | 강 정하 | 40h |  |
| 200 | 2.2.2.7 | 선수 생성 | 5d? | 2012-02-23 | 2012-02-29 | 199 |  |  | 6d | 0d |  | 강 정하 | 40h |  |
| 201 | 2.2.2.8 | 팝업창 | 3d? | 2012-03-01 | 2012-03-05 | 200 |  |  | 6d | 0d |  | 강 정하 | 24h |  |
| 202 | 2.2.2.9 | 강화 | 5d? | 2012-03-06 | 2012-03-12 | 201 |  |  | 6d | 0d |  | 강 정하 | 40h |  |
| 203 | 2.2.2.10 | 이모티콘 | 3d? | 2012-03-13 | 2012-03-15 | 202 |  |  | 6d | 0d |  | 강 정하 | 24h |  |
| 204 | 2.2.2.11 | 옵션 | 3d? | 2012-03-16 | 2012-03-20 | 203 |  |  | 6d | 0d |  | 강 정하 | 24h |  |
| 205 | 2.2.2.12 | 상점 화면 구성 | 5d? | 2012-03-21 | 2012-03-27 | 204 |  |  | 6d | 0d |  | 강 정하 | 40h |  |
| 206 | 2.2.2.13 | 피망플러스 | 2d? | 2012-03-28 | 2012-03-29 | 205 |  |  | 6d | 0d |  | 강 정하 | 16h |  |
| 207 | 2.2.2.14 | 수정 및 보완 | 10d? | 2012-03-30 | 2012-04-12 | 206 |  |  | 6d |  |  | 강 정하 | 80h |  |
| 208 | 2.2.3 | **컨셉아트** | 40d? | 2011-11-28 A | 2012-01-20 |  | 77% | 9.3d? | 65d |  |  |  | 344h | 264h |
| 209 | 2.2.3.1 | 구장1 | 10d | 2011-11-28 A | 2011-12-09 A |  | 100% |  |  |  | finish no earlier than 2011-12-09 | 석 근덕 | 80h | 80h |
| 210 | 2.2.3.2 | 구장2 | 15d? | 2011-12-19 A | 2012-01-06 A |  | 100% |  |  |  | finish no earlier than 2012-01-06 | 석 근덕 | 120h | 120h |
| 211 | 2.2.3.3 | 구장3 | 8d | 2012-01-09 A | 2012-01-18 A |  | 100% |  |  |  | finish no earlier than 2012-01-18 | 석 근덕 | 64h | 64h |
| 212 | 2.2.3.4 | 아이템 2차 | 10d | 2012-01-09 | 2012-01-20 |  |  |  | 65d |  | start no earlier than 2012-01-09 | 석 근덕 | 80h |  |
